Schedule from MS Project, 2016-02-29 to 2016-09-02.

## Calendars

- Standard: Mon-Fri 08:00-12:00, 13:00-17:00; Sat-Sun off.

## Resources

| Resource |
| --- |
| PM2 |
| RE4 |
| RE76 |
| RE11 |
| RE12 |
| SE2 |
| SE3 |
| SE4 |
| SE5 |
| SE6 |
| SE7 |
| SE8 |
| SE9 |
| PE21 |
| PE22 |
| PE23 |
| PE25 |
| PE29 |
| TE42 |
| TE43 |
| TE44 |
| TE48 |
| TE49 |
| DE41 |
| DE42 |
| DE43 |
| DE44 |
| DE45 |
| DE47 |
| DE48 |
| DE49 |
| PE211 |
| PE212 |
| PE213 |
| PE214 |
| TE191 |
| TE192 |
| TE193 |
| TE194 |

## Schedule

| ID | WBS | Task | Duration | Start | Finish | Predecessors | Total slack | Free slack | Resources | Work |
| --- | --- | --- | --- | --- | --- | --- | --- | --- | --- | --- |
| 1 | 1 | **Project 2** | 134.43d | 2016-02-29 | 2016-09-02 |  | 0d |  |  | 5171.02h |
| 2 | 1.1 | **ProjectPlan** | 13.34d | 2016-02-29 | 2016-03-17 |  | 0d |  |  | 273.68h |
| 3 | 1.1.1 | WritePlan | 7.31d | 2016-02-29 | 2016-03-09 |  | 0d |  | PM2 | 58.48h |
| 4 | 1.1.2 | **Review Plan** | 4.76d | 2016-03-09 | 2016-03-16 | 3 | 0d |  |  | 205.04h |
| 5 | 1.1.2.1 | Preparation for review | 2.93d | 2016-03-09 | 2016-03-14 | 3 | 0d |  | DE42; PE22; RE11; SE2; TE42 | 117.2h |
| 6 | 1.1.2.2 | Review Meeting | 1.83d | 2016-03-14 | 2016-03-16 | 5 | 0d |  | DE42; PE22; RE11; SE2; TE42; PM2 | 87.84h |
| 7 | 1.1.3 | Rework | 1.27d | 2016-03-16 | 2016-03-17 | 6 | 0d |  | PM2 | 10.16h |
| 8 | 1.2 | **Requirement** | 14.37d | 2016-03-17 | 2016-04-06 | 7 | 0d |  |  | 480.24h |
| 9 | 1.2.1 | Write requirements | 1.57d | 2016-03-17 | 2016-03-18 | 7 | 0d |  | RE11; RE12; RE76 | 37.6h |
| 10 | 1.2.2 | **Review Requirements** | 12.23d | 2016-03-18 | 2016-04-06 | 9 | 0d |  |  | 428.96h |
| 11 | 1.2.2.1 | Preparation for review | 7.53d | 2016-03-18 | 2016-03-30 | 9 | 0d |  | DE45; PE211; SE9; TE43 | 240.96h |
| 12 | 1.2.2.2 | Review Meeting | 4.7d | 2016-03-30 | 2016-04-06 | 11 | 0d |  | DE45; PE211; TE43; RE11; SE9 | 188h |
| 13 | 1.2.3 | Rework | 0.57d | 2016-04-06 | 2016-04-06 | 12 | 0d |  | RE11; RE12; RE76 | 13.68h |
| 14 | 1.3 | **Lab and Environment Setup** | 18.31d | 2016-04-06 | 2016-05-03 | 13 | 0.87d |  |  | 201.04h |
| 15 | 1.3.1 | **Hardware** | 14.44d | 2016-04-06 | 2016-04-27 | 13 | 0.87d |  |  | 139.04h |
| 16 | 1.3.1.1 | Install Server | 7.38d | 2016-04-06 | 2016-04-20 | 13 | 0.87d | 0d | SE8; SE5 | 96h |
| 17 | 1.3.1.2 | Install Clients | 4.31d | 2016-04-20 | 2016-04-27 | 16 | 0.87d | 0d | SE7; SE8 | 43.04h |
| 18 | 1.3.2 | **Software** | 3.88d | 2016-04-27 | 2016-05-03 | 17 | 0.87d |  |  | 62h |
| 19 | 1.3.2.1 | Install Development Tools | 1.62d | 2016-04-27 | 2016-04-28 | 17 | 0.87d | 0d | SE7; SE8 | 26h |
| 20 | 1.3.2.2 | Install Testing Tools | 2.25d | 2016-04-28 | 2016-05-03 | 19 | 0.87d |  | SE7; SE8 | 36h |
| 21 | 1.4 | **Analysis/Design Document** | 11.75d | 2016-04-06 | 2016-04-22 | 13 | 0d |  |  | 200.8h |
| 22 | 1.4.1 | Write DD | 1.49d | 2016-04-06 | 2016-04-08 | 13 | 0d |  | SE7; SE9 | 23.84h |
| 23 | 1.4.2 | **Review DD** | 7.51d | 2016-04-08 | 2016-04-19 | 22 | 0d |  |  | 154.96h |
| 24 | 1.4.2.1 | Preparation for DD | 5.36d | 2016-04-08 | 2016-04-15 | 22 | 0d |  | SE4; SE6; SE2; SE3 | 95.36h |
| 25 | 1.4.2.2 | Review Meeting | 1.86d | 2016-04-15 | 2016-04-19 | 24 | 0d |  | SE4; SE6; SE2; SE3; SE9 | 59.6h |
| 26 | 1.4.3 | Rework | 2.75d | 2016-04-19 | 2016-04-22 | 25 | 0d |  | SE9; SE7 | 22h |

| ID | WBS | Task | Duration | Start | Finish | Predecessors | Total slack | Free slack | Resources | Work |
| --- | --- | --- | --- | --- | --- | --- | --- | --- | --- | --- |
| 27 | 1.5 | **DataModel** | 7.43d | 2016-04-22 | 2016-05-03 | 26 | 0d |  |  | 176.64h |
| 28 | 1.5.1 | Create Data Model | 2.9d | 2016-04-22 | 2016-04-27 | 26 | 0d |  | SE6; SE5; SE4 | 61.04h |
| 29 | 1.5.2 | **Review Data Model** | 2.86d | 2016-04-27 | 2016-05-02 | 28 | 0d |  |  | 99.12h |
| 30 | 1.5.2.1 | Preparation for DM | 1.91d | 2016-04-27 | 2016-04-29 | 28 | 0d |  | RE4; PE23; DE43; DE44 | 61.12h |
| 31 | 1.5.2.2 | Review Meeting | 0.95d | 2016-04-29 | 2016-05-02 | 30 | 0d |  | RE4; PE23; DE43; DE44; SE4 | 38h |
| 32 | 1.5.3 | Rework | 1.5d | 2016-05-02 | 2016-05-03 | 31 | 0d |  | SE4; SE5; SE6 | 16.48h |
| 33 | 1.6 | **Coding and unit test** | 67.79d | 2016-05-03 | 2016-08-05 | 32, 20 | 0d |  |  | 2526.8h |
| 34 | 1.6.1 | Write Code | 26.63d | 2016-05-03 | 2016-06-09 | 32, 20 | 0d |  | PE211; PE212; PE213; PE214; PE29 | 1065.2h |
| 35 | 1.6.2 | **Unit Testing** | 24.4d | 2016-06-09 | 2016-07-13 | 34 | 0d |  |  | 976.08h |
| 36 | 1.6.2.1 | Prepare/Execute Test Cases | 7.83d | 2016-06-09 | 2016-06-21 | 34 | 0d |  | PE211; PE212; PE213; PE214; PE29 | 313.04h |
| 37 | 1.6.2.2 | Fix Found defects | 10.2d | 2016-06-21 | 2016-07-05 | 36 | 0d |  | PE211; PE212; PE213; PE214; PE29 | 408h |
| 38 | 1.6.2.3 | Test Fixed Defects | 6.38d | 2016-07-05 | 2016-07-13 | 37 | 0d |  | PE211; PE212; PE213; PE214; PE29 | 255.04h |
| 39 | 1.6.3 | **Code Inspection** | 16.76d | 2016-07-13 | 2016-08-05 | 38 | 0d |  |  | 485.52h |
| 40 | 1.6.3.1 | Preparation for Code Inspection | 9.95d | 2016-07-13 | 2016-07-27 | 38 | 0d |  | PE21; PE22; PE23; PE25 | 213.12h |
| 41 | 1.6.3.2 | Code Inspection Meeting | 5.33d | 2016-07-27 | 2016-08-04 | 40 | 0d |  | PE21; PE22; PE23; PE25; PE211 | 213.2h |
| 42 | 1.6.3.3 | Rework | 1.48d | 2016-08-04 | 2016-08-05 | 41 | 0d |  | PE211; PE212; PE213; PE214; PE29 | 59.2h |
| 43 | 1.7 | **Testing** | 96.12d | 2016-04-06 | 2016-08-18 | 13 | 0d |  |  | 892.46h |
| 44 | 1.7.1 | Write Test plan(TP) | 9.45d | 2016-04-06 | 2016-04-20 | 13 | 69.43d | 0d | TE191; TE192; TE193; TE194 | 302.4h |
| 45 | 1.7.2 | **Review TP** | 8.09d | 2016-04-20 | 2016-05-02 | 44 | 69.43d |  |  | 270.86h |
| 46 | 1.7.2.1 | Preparation for TP | 4.72d | 2016-04-20 | 2016-04-26 | 44 | 69.43d | 0d | TE48; PE211; TE44; TE49 | 151.04h |
| 47 | 1.7.2.2 | Review TP Meeting | 2.79d | 2016-04-26 | 2016-04-29 | 46 | 69.43d | 0d | TE48; TE49; PE211; TE44; TE191 | 101.34h |
| 48 | 1.7.2.3 | Rework | 0.58d | 2016-04-29 | 2016-05-02 | 47 | 69.43d |  | TE192; TE191; TE193; TE194 | 18.48h |
| 49 | 1.7.3 | Execute TP(test cases) | 5.85d | 2016-08-05 | 2016-08-15 | 48, 20, 42 | 0d |  | TE191; TE192; TE193; TE194 | 187.2h |
| 50 | 1.7.4 | Fix Found Defects | 3.3d | 2016-08-15 | 2016-08-18 | 49 | 0d |  | PE211; PE212; PE213; PE214; PE29 | 132h |

| ID | WBS | Task | Duration | Start | Finish | Predecessors | Total slack | Resources | Work |
| --- | --- | --- | --- | --- | --- | --- | --- | --- | --- |
| 51 | 1.8 | **Documentation** | 106.72d | 2016-04-06 | 2016-09-02 | 13 | 0d |  | 419.36h |
| 52 | 1.8.1 | User Documentation | 4.15d | 2016-04-06 | 2016-04-13 | 13 | 91.11d | DE41; DE42; DE43; DE44 | 49.44h |
| 53 | 1.8.2 | **Review UD** | 10.6d | 2016-08-18 | 2016-09-02 | 52, 50 | 0d |  | 369.92h |
| 54 | 1.8.2.1 | Preparation for UD | 6.18d | 2016-08-18 | 2016-08-29 | 52, 50 | 0d | DE45; DE47; DE48; DE49 | 197.76h |
| 55 | 1.8.2.2 | Review UD Meeting | 3.86d | 2016-08-29 | 2016-09-01 | 54 | 0d | DE45; DE47; DE48; DE49; DE44 | 154.4h |
| 56 | 1.8.2.3 | Rework | 0.56d | 2016-09-01 | 2016-09-02 | 55 | 0d | DE41; DE42; DE43; DE44 | 17.76h |
