Schedule from MS Project, 2016-02-15 to 2016-09-28.

## Calendars

- Standard: Mon-Fri 08:00-12:00, 13:00-17:00; Sat-Sun off.

## Resources

| Resource |
| --- |
| PM1 |
| PM2 |
| PM3 |
| PM4 |
| PM5 |
| RE4 |
| RE5 |
| RE76 |
| RE7 |
| RE8 |
| RE9 |
| RE10 |
| RE11 |
| RE12 |
| SE1 |
| SE2 |
| SE3 |
| SE4 |
| SE5 |
| SE6 |
| SE7 |
| SE8 |
| SE9 |
| PE21 |
| PE22 |
| PE23 |
| PE24 |
| PE25 |
| PE26 |
| PE27 |
| PE28 |
| PE29 |
| TE41 |
| TE42 |
| TE43 |
| TE44 |
| TE45 |
| TE46 |
| TE47 |
| TE48 |
| TE49 |
| DE41 |
| DE42 |
| DE43 |
| DE44 |
| DE45 |
| DE47 |
| DE48 |
| DE49 |
| PM8 |
| PM9 |
| RE210 |
| RE211 |
| RE212 |
| RE213 |
| RE214 |
| RE215 |
| PE211 |
| PE212 |
| PE213 |
| PE214 |
| PE215 |
| PE216 |
| TE191 |
| TE192 |
| TE193 |
| TE194 |
| TE195 |
| TE196 |
| TE3811 |
| TE73812 |
| SE74107 |
| SE74108 |
| PE6017 |

## Schedule

| ID | WBS | Task | Duration | Start | Finish | Predecessors | Total slack | Free slack | Resources | Work |
| --- | --- | --- | --- | --- | --- | --- | --- | --- | --- | --- |
| 1 | 1 | **Project 1** | 162.83d | 2016-02-15 | 2016-09-28 |  | 0d |  |  | 6176.4h |
| 2 | 1.1 | **Project Plan** | 20.16d | 2016-02-15 | 2016-03-14 |  | 0d |  |  | 471.04h |
| 3 | 1.1.1 | Write Plan | 10.56d | 2016-02-15 | 2016-02-29 |  | 0d |  | PM1 | 84.48h |
| 4 | 1.1.2 | **Review Plan** | 8.8d | 2016-02-29 | 2016-03-11 | 3 | 0d |  |  | 380.16h |
| 5 | 1.1.2.1 | Preparation for review | 5.28d | 2016-02-29 | 2016-03-07 | 3 | 0d |  | DE41; PE25; RE4; SE1; TE41 | 211.2h |
| 6 | 1.1.2.2 | Review Meeting | 3.52d | 2016-03-07 | 2016-03-11 | 5 | 0d |  | DE41; PE25; RE4; SE1; TE41; PM1 | 168.96h |
| 7 | 1.1.3 | Rework | 0.8d | 2016-03-11 | 2016-03-14 | 6 | 0d |  | PM1 | 6.4h |
| 8 | 1.2 | **Risk Mitigation and Contingency Plan** | 5.39d | 2016-03-14 | 2016-03-21 | 7 | 16.23d |  |  | 116.32h |
| 9 | 1.2.1 | Write Plan | 2.5d | 2016-03-14 | 2016-03-16 | 7 | 16.23d | 0d | PM1 | 20h |
| 10 | 1.2.2 | **Review Plan** | 2.08d | 2016-03-16 | 2016-03-18 | 9 | 16.23d |  |  | 89.84h |
| 11 | 1.2.2.1 | Preparation for review | 1.25d | 2016-03-16 | 2016-03-17 | 9 | 16.23d | 0d | DE41; PE21; RE4; SE1; TE41 | 50h |
| 12 | 1.2.2.2 | Review Meeting | 0.83d | 2016-03-17 | 2016-03-18 | 11 | 16.23d | 0d | DE41; PE21; PM1; RE4; SE1; TE41 | 39.84h |
| 13 | 1.2.3 | Rework | 0.81d | 2016-03-18 | 2016-03-21 | 12 | 16.23d |  | PM1 | 6.48h |
| 14 | 1.3 | **Requirement** | 21.62d | 2016-03-14 | 2016-04-12 | 7 | 0d |  |  | 977.6h |
| 15 | 1.3.1 | Write requirements | 1.08d | 2016-03-14 | 2016-03-15 | 7 | 0d |  | RE5; RE8; RE7; RE9; RE10 | 43.04h |
| 16 | 1.3.2 | Write Use Case Model | 13.75d | 2016-03-15 | 2016-04-01 | 15 | 0d |  | RE5; RE7; RE8; RE9; RE10 | 550h |
| 17 | 1.3.3 | **Review Requirements/ Use Case Model** | 6.19d | 2016-04-01 | 2016-04-12 | 16 | 0d |  |  | 360.56h |
| 18 | 1.3.3.1 | Preparation for review | 1.34d | 2016-04-01 | 2016-04-05 | 16 | 2.41d | 0d | DE41; PE21; SE1; TE41 | 42.88h |
| 20 | 1.3.3.2 | Review Meeting | 2.44d | 2016-04-05 | 2016-04-07 | 18 | 2.41d |  | DE41; PE21; SE1; TE41; RE5 | 97.6h |
| 22 | 1.3.4 | Rework | 0.6d | 2016-04-12 | 2016-04-12 | 20 | 0d |  | RE5; RE7; RE8; RE9; RE10 | 24h |
| 23 | 1.4 | **Analysis** | 6.66d | 2016-04-12 | 2016-04-21 | 22, 13 | 0d |  |  | 176.48h |
| 24 | 1.4.1 | Write Analysis Document | 0.69d | 2016-04-12 | 2016-04-13 | 22, 13 | 0d |  | SE1; SE2; SE3; SE4 | 22h |
| 25 | 1.4.2 | **Review Analysis Document** | 5.62d | 2016-04-13 | 2016-04-21 | 24 | 0d |  |  | 143.2h |
| 26 | 1.4.2.1 | Preparation for Analysis Document | 2.75d | 2016-04-13 | 2016-04-18 | 24 | 0d |  | SE7; SE8; SE9; SE6 | 88h |
| 27 | 1.4.2.2 | Review Meeting | 2.87d | 2016-04-18 | 2016-04-21 | 26 | 0d |  | SE6; SE9; SE1; SE7; SE8 | 55.2h |
| 28 | 1.4.3 | Rework | 0.35d | 2016-04-21 | 2016-04-21 | 27 | 0d |  | SE1; SE2; SE3; SE4 | 11.28h |

| ID | WBS | Task | Duration | Start | Finish | Predecessors | Total slack | Free slack | Resources | Work |
| --- | --- | --- | --- | --- | --- | --- | --- | --- | --- | --- |
| 29 | 1.5 | **Design** | 17.76d | 2016-04-21 | 2016-05-17 | 28 | 0d |  |  | 501.68h |
| 30 | 1.5.1 | Write DD | 1.38d | 2016-04-21 | 2016-04-22 | 28 | 0d |  | SE1; SE2; SE3; SE4; SE7 | 55.04h |
| 31 | 1.5.2 | **Review DD** | 6.86d | 2016-04-22 | 2016-05-03 | 30 | 0d |  |  | 143.2h |
| 32 | 1.5.2.1 | Preparation for DD | 4.75d | 2016-04-22 | 2016-04-29 | 30 | 0d |  | SE5; SE6; SE9; PE21 | 88h |
| 33 | 1.5.2.2 | Review Meeting | 2.11d | 2016-04-29 | 2016-05-03 | 32 | 0d |  | SE5; SE6; SE9; PE21; SE1 | 55.2h |
| 34 | 1.5.3 | Rework | 1.12d | 2016-05-03 | 2016-05-04 | 33 | 0d |  | SE1; SE2; SE3; SE4 | 26.4h |
| 35 | 1.5.4 | Write Data Model (DM) | 3.12d | 2016-05-04 | 2016-05-09 | 34 | 0d |  | SE1; SE2; SE3; SE4 | 100h |
| 36 | 1.5.5 | **Review DM** | 4.17d | 2016-05-09 | 2016-05-16 | 35 | 0d |  |  | 141.76h |
| 37 | 1.5.5.1 | Preparation for DM | 3.13d | 2016-05-09 | 2016-05-13 | 35 | 0d |  | SE5; SE6; SE9; PE21 | 100.16h |
| 38 | 1.5.5.2 | Review Meeting | 1.04d | 2016-05-13 | 2016-05-16 | 37 | 0d |  | SE6; SE5; SE9; PE21; SE1 | 41.6h |
| 39 | 1.5.6 | Rework | 1.1d | 2016-05-16 | 2016-05-17 | 38 | 0d |  | SE1; SE2; SE3; SE4 | 35.28h |
| 40 | 1.6 | **Coding and unit test** | 61.75d | 2016-05-17 | 2016-08-10 | 39 | 0d |  |  | 2207.6h |
| 41 | 1.6.1 | Write Code | 29.03d | 2016-05-17 | 2016-06-27 | 39 | 0d |  | PE21; PE22; PE23; PE24; PE25 | 1161.2h |
| 42 | 1.6.2 | **Unit Testing** | 17.02d | 2016-06-27 | 2016-07-20 | 41 | 0d |  |  | 544.48h |
| 43 | 1.6.2.1 | Prepare/Execute Test Cases | 6.56d | 2016-06-27 | 2016-07-05 | 41 | 0d |  | PE21; PE22; PE23; PE24 | 210h |
| 44 | 1.6.2.2 | Fix Found Defects | 9d | 2016-07-05 | 2016-07-18 | 43 | 0d |  | PE21; PE22; PE23; PE24 | 288h |
| 45 | 1.6.2.3 | Test Fixed Defects | 1.45d | 2016-07-18 | 2016-07-20 | 44 | 0d |  | PE21; PE22; PE23; PE24 | 46.48h |
| 46 | 1.6.3 | **Code Inspection** | 15.7d | 2016-07-20 | 2016-08-10 | 45 | 0d |  |  | 501.92h |
| 47 | 1.6.3.1 | Preparation for Code Inspection | 7.26d | 2016-07-20 | 2016-07-29 | 45 | 0d |  | PE29; PE26; PE27; PE28 | 232.32h |
| 48 | 1.6.3.2 | Code Inspection Meeting | 6.07d | 2016-07-29 | 2016-08-08 | 47 | 0d |  | PE25; PE26; PE27; PE28; PE29 | 193.6h |
| 49 | 1.6.3.3 | Rework | 2.38d | 2016-08-08 | 2016-08-10 | 48 | 0d |  | PE21; PE22; PE23; PE24 | 76h |
| 50 | 1.7 | **Testing** | 109.09d | 2016-04-12 | 2016-09-12 | 22 | 0d |  |  | 1286.64h |
| 51 | 1.7.1 | Write test plan (TP) | 4.94d | 2016-04-12 | 2016-04-19 | 22 | 73.71d | 0d | TE41; TE42; TE43; TE44; TE49 | 197.68h |
| 52 | 1.7.2 | **Review TP** | 7.51d | 2016-04-19 | 2016-04-29 | 51 | 73.71d |  |  | 242.32h |
| 53 | 1.7.2.1 | Preparation for TP | 4.33d | 2016-04-19 | 2016-04-26 | 51 | 73.71d | 0d | TE45; TE46; TE47; PE22 | 138.56h |
| 54 | 1.7.2.2 | Review TP Meeting | 2.16d | 2016-04-26 | 2016-04-28 | 53 | 73.71d | 0d | TE45; TE46; TE47; PE22; TE41 | 86.4h |
| 55 | 1.7.2.3 | Rework | 0.94d | 2016-04-28 | 2016-04-29 | 54 | 73.71d |  | TE41; TE42; TE43; TE44; TE49 | 17.36h |
| 56 | 1.7.3 | Execute TP (test cases) | 7.73d | 2016-08-10 | 2016-08-22 | 49, 55 | 0d |  | TE41; TE42; TE43; TE44; TE49 | 309.04h |
| 57 | 1.7.4 | Fix Found Defects | 12d | 2016-08-22 | 2016-09-07 | 56 | 0d |  | PE22; PE23; PE24; PE25 | 384h |
| 58 | 1.7.5 | Test Fixed Defects | 3.2d | 2016-09-07 | 2016-09-12 | 57 | 0d |  | TE41; TE42; TE43; TE44; TE49; PE24 | 153.6h |

| ID | WBS | Task | Duration | Start | Finish | Predecessors | Total slack | Resources | Work |
| --- | --- | --- | --- | --- | --- | --- | --- | --- | --- |
| 59 | 1.8 | **Documentation** | 121.05d | 2016-04-12 | 2016-09-28 | 22 | 0d |  | 439.04h |
| 60 | 1.8.1 | User Documentation | 4.08d | 2016-04-12 | 2016-04-18 | 22 | 105.01d | DE41; DE42; DE43; DE44 | 100.32h |
| 61 | 1.8.2 | **Review UD** | 9.64d | 2016-09-15 | 2016-09-28 | 60, 58 | 0d |  | 338.72h |
| 62 | 1.8.2.1 | Preparation for UD Review | 5.38d | 2016-09-15 | 2016-09-22 | 60, 58 | 0d | DE47; DE48; DE49; DE45 | 172.16h |
| 63 | 1.8.2.2 | Review UD Meeting | 3.76d | 2016-09-22 | 2016-09-28 | 62 | 0d | DE45; DE47; DE48; DE49; DE42 | 150.4h |
| 64 | 1.8.2.3 | Rework | 0.51d | 2016-09-28 | 2016-09-28 | 63 | 0d | DE41; DE42; DE43; DE44 | 16.16h |
